# 3.5 运动场地社区直接成本估算

Schedule from MS Project, 2019-03-18 to 2019-07-02, costs in ¥, A marks actual dates.

## Calendars

- 标准: Mon-Fri 08:00-12:00, 13:00-17:00; Sat-Sun off.

## Resources

| Resource | Rate | Cost per use |
| --- | --- | --- |
| 项目经理 | 30 | 100 |
| 测试员1 | 30 |  |
| 测试员2 | 30 |  |
| UI设计人员 | 30 |  |
| 程序员1 | 30 |  |
| 程序员2 | 30 |  |
| 设计专家 | 30 |  |
| 需求专家 | 30 |  |
| 质量专家 | 30 |  |
| 团队建设费 |  |  |
| 测试货物 |  |  |
| 间接成本 |  |  |
| 储备 |  |  |

## Schedule

| ID | WBS | Task | Type | Duration | Start | Finish | Predecessors | Complete | Remaining | Total slack | Resources | Work | Actual work | Cost | Actual cost | 总成本 |
| --- | --- | --- | --- | --- | --- | --- | --- | --- | --- | --- | --- | --- | --- | --- | --- | --- |
| 1 | 1 | **启动** |  | 5d | 2019-03-18 A | 2019-03-22 |  | 19% | 4.06d |  | 间接成本 [0.1%]; 储备 [0.1%] | 136h | 17.5h | 9,180 | 825 | ¥4,655.00 |
| 2 | 1.1 | 组建核心团队 | manual | 1d | 2019-03-18 | 2019-03-18 |  | 31% |  |  | UI设计人员; 设计专家; 项目经理; 需求专家; 质量专家 | 40h | 12.5h | 1,300 | 475 | ¥825.00 |
| 3 | 1.2 | 关系人分析 | manual | 1d | 2019-03-19 A | 2019-03-19 |  | 31% | 0.69d |  | 项目经理 | 8h | 2.5h | 340 | 175 | ¥165.00 |
| 4 | 1.3 | 里程碑计划 | manual | 1d | 2019-03-20 A | 2019-03-20 |  | 31% | 0.69d |  | 项目经理 | 8h | 2.5h | 340 | 175 | ¥165.00 |
| 5 | 1.4 | 制定项目章程 | manual | 1d | 2019-03-21 | 2019-03-21 | 4, 2, 3 |  |  |  | 项目经理 | 8h |  | 340 |  | ¥340.00 |
| 6 | 1.5 | 项目启动大会 | manual | 1d | 2019-03-22 | 2019-03-22 | 5 |  |  |  | UI设计人员; 测试员1; 测试员2; 程序员1; 程序员2; 设计专家; 项目经理; 需求专家; 质量专家 | 72h |  | 2,260 |  | ¥2,260.00 |
| 7 | 2 | **规划** |  | 40d | 2019-03-25 A | 2019-05-17 |  | 3% | 38.63d | 0d | 间接成本 [0.1%]; 储备 [0.1%] | 364h | 12.48h | 25,165 | 674.4 | ¥12,245.60 |
| 8 | 2.1 | **规划范围** |  | 10d | 2019-03-25 A | 2019-04-05 |  | 16% | 8.44d | 0d |  | 80h | 12.48h | 2,700 | 674.4 | ¥2,025.60 |
| 9 | 2.1.1 | 制定需求说明书 | manual | 5d | 2019-03-25 A | 2019-03-29 | 6 |  | 5d |  | 需求专家 | 40h |  | 1,200 |  | ¥1,200.00 |
| 10 | 2.1.2 | 界面设计 | manual | 1d | 2019-04-01 A | 2019-04-02 | 9 | 31% | 0.69d |  | UI设计人员 | 8h | 2.48h | 240 | 74.4 | ¥165.60 |
| 11 | 2.1.3 | 详细设计说明书 | manual | 1d | 2019-04-02 A | 2019-04-02 | 9 | 31% | 0.69d |  | 设计专家 | 8h | 2.5h | 240 | 75 | ¥165.00 |
| 12 | 2.1.4 | 范围说明书 | manual | 1d | 2019-04-03 A | 2019-04-03 | 9 | 31% | 0.69d |  | 项目经理 | 8h | 2.5h | 340 | 175 | ¥165.00 |
| 13 | 2.1.5 | 创建WPS | manual | 1d | 2019-04-04 A | 2019-04-04 | 12, 10, 11 | 31% | 0.69d |  | 项目经理 | 8h | 2.5h | 340 | 175 | ¥165.00 |
| 14 | 2.1.6 | 形成范围基准 | manual | 1d | 2019-04-05 A | 2019-04-05 | 13 | 31% | 0.69d |  | 项目经理 | 8h | 2.5h | 340 | 175 | ¥165.00 |
| 15 | 2.2 | **规划时间** |  | 6.5d | 2019-04-08 | 2019-04-16 |  |  |  | 0d |  | 44h |  | 1,820 |  | ¥1,820.00 |
| 16 | 2.2.1 | 排列工作包顺序 | manual | 1d | 2019-04-08 | 2019-04-08 | 14 |  |  |  | 项目经理 | 8h |  | 340 |  | ¥340.00 |
| 17 | 2.2.2 | 估算资源 | manual | 1d | 2019-04-09 | 2019-04-09 | 16 |  |  |  | 项目经理 | 8h |  | 340 |  | ¥340.00 |
| 18 | 2.2.3 | 估算持续时间 | manual | 2d | 2019-04-11 | 2019-04-12 | 17 |  |  |  | 项目经理 | 16h |  | 580 |  | ¥580.00 |
| 19 | 2.2.4 | 制定进度计划 | manual | 1d | 2019-04-15 | 2019-04-15 | 18 |  |  |  | 项目经理 | 8h |  | 340 |  | ¥340.00 |
| 20 | 2.2.5 | 形成进度基准 | manual | 0.5d | 2019-04-16 | 2019-04-16 | 19 |  |  |  | 项目经理 | 4h |  | 220 |  | ¥220.00 |
| 21 | 2.3 | **规划成本** |  | 6d | 2019-04-17 | 2019-04-24 |  |  |  |  |  | 48h |  | 1,740 |  | ¥1,740.00 |
| 22 | 2.3.1 | 项目预算 | manual | 3d | 2019-04-17 | 2019-04-19 | 20 |  |  |  | 项目经理 | 24h |  | 820 |  | ¥820.00 |
| 23 | 2.3.2 | 项目成本预算 | manual | 2d | 2019-04-22 | 2019-04-23 | 22 |  |  |  | 项目经理 | 16h |  | 580 |  | ¥580.00 |
| 24 | 2.3.3 | 形成范围基准 | manual | 1d | 2019-04-24 | 2019-04-24 | 23 |  |  |  | 项目经理 | 8h |  | 340 |  | ¥340.00 |

| ID | WBS | Task | Type | Duration | Start | Finish | Predecessors | Total slack | Constraint | Resources | Work | Cost | 总成本 |
| --- | --- | --- | --- | --- | --- | --- | --- | --- | --- | --- | --- | --- | --- |
| 25 | 2.4 | **规划质量** |  | 8d | 2019-04-09 | 2019-04-18 |  | 0d |  |  | 56h | 1,680 | ¥1,680.00 |
| 26 | 2.4.1 | 制定测试计划 | manual | 1d | 2019-04-09 | 2019-04-09 | 14 |  | finish no earlier than 2019-04-09 | 质量专家 | 8h | 240 | ¥240.00 |
| 27 | 2.4.2 | 制定测试用例 | manual | 6d | 2019-04-11 | 2019-04-18 | 26 |  |  | 质量专家 | 48h | 1,440 | ¥1,440.00 |
| 28 | 2.5 | **规划人力资源** |  | 4d | 2019-04-25 | 2019-04-30 |  |  |  |  | 32h | 1,160 | ¥1,160.00 |
| 29 | 2.5.1 | 制定人力资源计划 | manual | 2d | 2019-04-25 | 2019-04-26 | 17 |  |  | 项目经理 | 16h | 580 | ¥580.00 |
| 30 | 2.5.2 | 制定人员配备管理计划 | manual | 2d | 2019-04-29 | 2019-04-30 | 29 |  |  | 项目经理 | 16h | 580 | ¥580.00 |
| 31 | 2.6 | **规划沟通** |  | 2d | 2019-05-01 | 2019-05-02 |  |  |  |  | 16h | 580 | ¥580.00 |
| 32 | 2.6.1 | 制定沟通管理计划 | manual | 2d | 2019-05-01 | 2019-05-02 | 30 |  |  | 项目经理 | 16h | 580 | ¥580.00 |
| 33 | 2.7 | **规划采购** |  | 7d | 2019-05-03 | 2019-05-13 |  |  |  |  | 56h | 1,880 | ¥1,880.00 |
| 34 | 2.7.1 | 自制外购分析 | manual | 2d | 2019-05-03 | 2019-05-06 | 17 |  |  | 项目经理 | 16h | 580 | ¥580.00 |
| 35 | 2.7.2 | 制定采购文件 | manual | 5d | 2019-05-07 | 2019-05-13 | 34 |  |  | 项目经理 | 40h | 1,300 | ¥1,300.00 |
| 36 | 2.8 | **规划风险** |  | 4d | 2019-05-14 | 2019-05-17 |  |  |  |  | 32h | 1,360 | ¥1,360.00 |
| 37 | 2.8.1 | 识别风险 | manual | 1d | 2019-05-14 | 2019-05-14 | 15, 21, 25, 28, 31, 33 |  |  | 项目经理 | 8h | 340 | ¥340.00 |
| 38 | 2.8.2 | 风险分析 | manual | 1d | 2019-05-15 | 2019-05-15 | 37 |  |  | 项目经理 | 8h | 340 | ¥340.00 |
| 39 | 2.8.3 | 制定风险登记册 | manual | 1d | 2019-05-16 | 2019-05-16 | 38 |  |  | 项目经理 | 8h | 340 | ¥340.00 |
| 40 | 2.8.4 | 规划整合 | manual | 1d | 2019-05-17 | 2019-05-17 | 39 |  |  | 项目经理 | 8h | 340 | ¥340.00 |
| 41 | 3 | **执行与监控** |  | 29d | 2019-05-20 | 2019-06-27 |  |  |  | 间接成本 [0.1%]; 储备 [0.1%] | 560h | 36,000 | ¥18,000.00 |
| 42 | 3.1 | 组建项目团队 | manual | 1d | 2019-05-20 | 2019-05-20 | 7 |  |  | 测试员1; 项目经理 | 16h | 580 | ¥580.00 |
| 43 | 3.2 | **项目执行** |  | 16d | 2019-05-21 | 2019-06-11 |  | 0d |  |  | 128h | 3,840 | ¥3,840.00 |
| 44 | 3.2.1 | **用户模块** |  | 7d | 2019-05-21 | 2019-05-29 |  |  |  |  | 56h | 1,680 | ¥1,680.00 |
| 45 | 3.2.1.1 | 注册登录 | manual | 1d | 2019-05-21 | 2019-05-21 | 42 |  |  | 程序员1 | 8h | 240 | ¥240.00 |
| 46 | 3.2.1.2 | 首页 | manual | 1d | 2019-05-22 | 2019-05-22 | 45 |  |  | 程序员1 | 8h | 240 | ¥240.00 |
| 47 | 3.2.1.3 | 浏览动态 | manual | 1d | 2019-05-23 | 2019-05-23 | 46 |  |  | 程序员1 | 8h | 240 | ¥240.00 |
| 48 | 3.2.1.4 | 预定场地 | manual | 1d | 2019-05-24 | 2019-05-24 | 47 |  |  | 程序员1 | 8h | 240 | ¥240.00 |
| 49 | 3.2.1.5 | 消息中心 | manual | 1d | 2019-05-27 | 2019-05-27 | 48 |  |  | 程序员1 | 8h | 240 | ¥240.00 |
| 50 | 3.2.1.6 | 下单 | manual | 1d | 2019-05-28 | 2019-05-28 | 49 |  |  | 程序员1 | 8h | 240 | ¥240.00 |
| 51 | 3.2.1.7 | 个人配置 | manual | 1d | 2019-05-29 | 2019-05-29 | 50 |  |  | 程序员1 | 8h | 240 | ¥240.00 |

| ID | WBS | Task | Type | Duration | Start | Finish | Predecessors | Resources | Work | Cost | 总成本 |
| --- | --- | --- | --- | --- | --- | --- | --- | --- | --- | --- | --- |
| 52 | 3.2.2 | **商家模块** |  | 5d | 2019-05-30 | 2019-06-05 |  |  | 40h | 1,200 | ¥1,200.00 |
| 53 | 3.2.2.1 | 商家入住 | manual | 1d | 2019-05-30 | 2019-05-30 | 42 | 程序员2 | 8h | 240 | ¥240.00 |
| 54 | 3.2.2.2 | 场地链接 | manual | 1d | 2019-05-31 | 2019-05-31 | 53 | 程序员2 | 8h | 240 | ¥240.00 |
| 55 | 3.2.2.3 | 订单处理 | manual | 1d | 2019-06-03 | 2019-06-03 | 54 | 程序员2 | 8h | 240 | ¥240.00 |
| 56 | 3.2.2.4 | 统计 | manual | 1d | 2019-06-04 | 2019-06-04 | 55 | 程序员2 | 8h | 240 | ¥240.00 |
| 57 | 3.2.2.5 | 商家配置 | manual | 1d | 2019-06-05 | 2019-06-05 | 56 | 程序员2 | 8h | 240 | ¥240.00 |
| 58 | 3.2.3 | **管理员模块** |  | 4d | 2019-06-06 | 2019-06-11 |  |  | 32h | 960 | ¥960.00 |
| 59 | 3.2.3.1 | 商家审核 | manual | 1d | 2019-06-06 | 2019-06-06 | 42 | 程序员1 | 8h | 240 | ¥240.00 |
| 60 | 3.2.3.2 | 推送内容管理 | manual | 1d | 2019-06-07 | 2019-06-07 | 59 | 程序员1 | 8h | 240 | ¥240.00 |
| 61 | 3.2.3.3 | 统计 | manual | 1d | 2019-06-10 | 2019-06-10 | 60 | 程序员2 | 8h | 240 | ¥240.00 |
| 62 | 3.2.3.4 | 备份 | manual | 1d | 2019-06-11 | 2019-06-11 | 61 | 程序员2 | 8h | 240 | ¥240.00 |
| 63 | 3.3 | **项目监控** |  | 4d | 2019-06-12 | 2019-06-17 |  |  | 88h | 3,040 | ¥3,040.00 |
| 64 | 3.3.1 | 各项指标监控 | manual | 1d | 2019-06-12 | 2019-06-12 | 42 | 测试员1; 项目经理 | 16h | 580 | ¥580.00 |
| 65 | 3.3.2 | 各项评审 | manual | 1d | 2019-06-13 | 2019-06-13 | 64 | 设计专家; 项目经理 | 16h | 580 | ¥580.00 |
| 66 | 3.3.3 | 变更评审 | manual | 1d | 2019-06-14 | 2019-06-14 | 65 | 设计专家; 项目经理 | 16h | 580 | ¥580.00 |
| 67 | 3.3.4 | 例会 | manual | 1d | 2019-06-17 | 2019-06-17 | 42 | UI设计人员; 测试员1; 测试员2; 项目经理; 设计专家 | 40h | 1,300 | ¥1,300.00 |
| 68 | 3.4 | **管理干系人** |  | 3d | 2019-06-18 | 2019-06-20 |  |  | 24h | 1,020 | ¥1,020.00 |
| 69 | 3.4.1 | 发布项目信息 | manual | 1d | 2019-06-18 | 2019-06-18 | 42 | 项目经理 | 8h | 340 | ¥340.00 |
| 70 | 3.4.2 | 报告监控指标 | manual | 1d | 2019-06-19 | 2019-06-19 | 42 | 项目经理 | 8h | 340 | ¥340.00 |
| 71 | 3.4.3 | 干系人沟通 | manual | 1d | 2019-06-20 | 2019-06-20 | 42 | 项目经理 | 8h | 340 | ¥340.00 |
| 72 | 3.5 | **团队建设** |  | 5d | 2019-06-21 | 2019-06-27 |  |  | 304h | 9,520 | ¥9,520.00 |
| 73 | 3.5.1 | 培训 | manual | 1d | 2019-06-21 | 2019-06-21 | 42 | UI设计人员; 测试员1; 测试员2; 程序员1; 程序员2; 设计专家; 项目经理; 需求专家; 质量专家 | 72h | 2,260 | ¥2,260.00 |
| 74 | 3.5.2 | 娱乐活动 | manual | 1d | 2019-06-24 | 2019-06-24 | 42 | UI设计人员; 测试员1; 测试员2; 程序员1; 程序员2; 设计专家; 项目经理; 需求专家; 质量专家 | 72h | 2,260 | ¥2,260.00 |
| 75 | 3.5.3 | 沟通 | manual | 1d | 2019-06-25 | 2019-06-25 | 42 | UI设计人员; 测试员1; 测试员2; 程序员1; 程序员2; 设计专家; 项目经理; 需求专家; 质量专家 | 72h | 2,260 | ¥2,260.00 |
| 76 | 3.5.4 | 采购 | manual | 1d | 2019-06-26 | 2019-06-26 | 42 | 测试员1; 测试员2 | 16h | 480 | ¥480.00 |
| 77 | 3.5.5 | 项目验收 | manual | 1d | 2019-06-27 | 2019-06-27 | 43 | UI设计人员; 测试员1; 测试员2; 程序员1; 程序员2; 设计专家; 项目经理; 需求专家; 质量专家 | 72h | 2,260 | ¥2,260.00 |

| ID | WBS | Task | Type | Duration | Start | Finish | Predecessors | Resources | Work | Cost | 总成本 |
| --- | --- | --- | --- | --- | --- | --- | --- | --- | --- | --- | --- |
| 78 | 4 | **结尾** |  | 3d | 2019-06-28 | 2019-07-02 |  | 间接成本 [0.1%]; 储备 [0.1%] | 136h | 8,760 | ¥4,380.00 |
| 79 | 4.1 | 项目终验 | manual | 1d | 2019-06-28 | 2019-06-28 | 77 | UI设计人员; 测试员1; 测试员2; 程序员1; 程序员2; 设计专家; 项目经理; 需求专家; 质量专家 | 72h | 2,260 | ¥2,260.00 |
| 80 | 4.2 | 结束采购 | manual | 1d | 2019-07-01 | 2019-07-01 | 77 | 项目经理 | 8h | 340 | ¥340.00 |
| 81 | 4.3 | 项目内部收尾 | manual | 1d | 2019-07-02 | 2019-07-02 | 77 | UI设计人员; 测试员1; 测试员2; 程序员1; 程序员2; 项目经理; 质量专家 | 56h | 1,780 | ¥1,780.00 |
